Task Name,Start Date,End Date,Assigned To,Status,% Complete,Category,Notes
1355 Riverside Production Schedule v02 - START BASIS 2026-07-20,07/20/2026,07/20/2026,PM / Super,Not Started,0.00,"","Dated production workbook generated 2026-06-25. Project start basis from uploaded July20_Start file name. | Production date window applied [milestone:yes, critical:yes]"
Mobilize GC field setup,07/20/2026,07/22/2026,PM / Super,Not Started,0.00,"",Production date window applied [critical:yes]
Notice to Proceed / Mobilization Start,07/21/2026,07/21/2026,PM / Super,Not Started,0.00,"","Production date window applied [milestone:yes, critical:yes]"
Confirm current issued-for-construction drawing/spec/bid basis,07/21/2026,07/22/2026,PM / Super,Not Started,0.00,"",Production date window applied [critical:yes]
Install temporary fencing and site signage,07/21/2026,07/22/2026,PM / Super,Not Started,0.00,"",Production date window applied
Confirm permit status and inspection contacts,07/22/2026,07/23/2026,PM / Super,Not Started,0.00,"",Production date window applied [critical:yes]
Install erosion control / BMPs,07/22/2026,07/23/2026,PM / Super,Not Started,0.00,"",Production date window applied [critical:yes]
Finalize project directory and communication protocol,07/23/2026,07/23/2026,PM / Super,Not Started,0.00,"",Production date window applied
Issue master subcontractor contact list,07/23/2026,07/23/2026,PM / Super,Not Started,0.00,"",Production date window applied
Install tree protection and landscape protection,07/23/2026,07/24/2026,PM / Super,Not Started,0.00,"",Production date window applied [critical:yes]
Set weekly schedule update cadence,07/24/2026,07/24/2026,PM / Super,Not Started,0.00,"",Production date window applied [critical:yes]
Establish survey control and benchmarks,07/24/2026,07/27/2026,PM / Super,Not Started,0.00,"",Production date window applied [critical:yes]
Finalize site logistics plan,07/27/2026,07/28/2026,PM / Super,Not Started,0.00,"",Production date window applied [critical:yes]
Finalize safety plan and site orientation process,07/27/2026,07/28/2026,PM / Super,Not Started,0.00,"",Production date window applied [critical:yes]
Utility locates complete,07/27/2026,07/28/2026,PM / Super,Not Started,0.00,"",Production date window applied [critical:yes]
PROCUREMENT - Finalize structural steel scope,07/27/2026,07/29/2026,PM / Procurement,Not Started,0.00,"",Production date window applied [critical:yes]
Confirm temporary utilities plan,07/28/2026,07/29/2026,PM / Super,Not Started,0.00,"",Production date window applied [critical:yes]
Temporary power/water/sanitation setup,07/28/2026,07/30/2026,PM / Super,Not Started,0.00,"",Production date window applied [critical:yes]
Confirm neighbor/access restrictions,07/29/2026,07/29/2026,PM / Super,Not Started,0.00,"",Production date window applied
Set RFI/submittal control log,07/29/2026,07/29/2026,PM / Super,Not Started,0.00,"",Production date window applied
Existing condition photo documentation,07/29/2026,07/30/2026,PM / Super,Not Started,0.00,"",Production date window applied
Set procurement control log,07/30/2026,07/30/2026,PM / Super,Not Started,0.00,"",Production date window applied [critical:yes]
Existing structure investigation / verification,07/30/2026,08/04/2026,PM / Super,Not Started,0.00,"",Production date window applied [critical:yes]
PROCUREMENT - Steel shop drawings,07/30/2026,08/12/2026,PM / Procurement,Not Started,0.00,"",Production date window applied [critical:yes]
Set owner decision log,07/31/2026,07/31/2026,PM / Super,Not Started,0.00,"",Production date window applied [critical:yes]
Pre-mobilization subcontractor coordination meeting,07/31/2026,07/31/2026,PM / Super,Not Started,0.00,"",Production date window applied [critical:yes]
Existing foundation verification,07/31/2026,08/04/2026,PM / Super,Not Started,0.00,"",Production date window applied [critical:yes]
Insurance/COI collection complete - initial trades,08/03/2026,08/05/2026,PM / Super,Not Started,0.00,"",Production date window applied [critical:yes]
Existing framing verification,08/03/2026,08/05/2026,PM / Super,Not Started,0.00,"",Production date window applied [critical:yes]
Selective interior demolition - Area A,08/03/2026,08/07/2026,PM / Super,Not Started,0.00,"",Production date window applied [critical:yes]
Confirm waste/export route and staging,08/04/2026,08/04/2026,PM / Super,Not Started,0.00,"",Production date window applied [critical:yes]
Finalize baseline schedule review with team,08/04/2026,08/04/2026,PM / Super,Not Started,0.00,"",Production date window applied [critical:yes]
Hazmat / regulated material verification,08/04/2026,08/06/2026,PM / Super,Not Started,0.00,"",Production date window applied
Publish two-week lookahead #1,08/05/2026,08/05/2026,PM / Super,Not Started,0.00,"",Production date window applied
Selective interior demolition - Area B,08/05/2026,08/11/2026,PM / Super,Not Started,0.00,"",Production date window applied [critical:yes]
PROCUREMENT - Architect/engineer review - steel,08/05/2026,08/11/2026,PM / Procurement,Not Started,0.00,"",Production date window applied [critical:yes]
Confirm superintendent reporting workflow,08/06/2026,08/06/2026,PM / Super,Not Started,0.00,"",Production date window applied
Confirm drawing revision distribution workflow,08/06/2026,08/06/2026,PM / Super,Not Started,0.00,"",Production date window applied
Owner salvage confirmation,08/06/2026,08/06/2026,PM / Super,Not Started,0.00,"",Production date window applied
Remove existing fixtures/equipment scheduled for replacement,08/06/2026,08/10/2026,PM / Super,Not Started,0.00,"",Production date window applied
Project controls setup complete milestone,08/07/2026,08/07/2026,PM / Super,Not Started,0.00,"","Production date window applied [milestone:yes, critical:yes]"
Protect existing finishes to remain,08/07/2026,08/11/2026,PM / Super,Not Started,0.00,"",Production date window applied
Temporary weather protection setup,08/10/2026,08/11/2026,PM / Super,Not Started,0.00,"",Production date window applied [critical:yes]
Sawcut slabs / openings per structural scope,08/10/2026,08/12/2026,PM / Super,Not Started,0.00,"",Production date window applied [critical:yes]
PROCUREMENT - Steel revise/resubmit if needed,08/10/2026,08/14/2026,PM / Procurement,Not Started,0.00,"",Production date window applied [critical:yes]
Temporary shoring plan final confirmation,08/11/2026,08/12/2026,PM / Super,Not Started,0.00,"",Production date window applied [critical:yes]
Remove existing exterior assemblies at tie-ins,08/11/2026,08/14/2026,PM / Super,Not Started,0.00,"",Production date window applied [critical:yes]
Pre-demo coordination meeting,08/12/2026,08/12/2026,PM / Super,Not Started,0.00,"",Production date window applied [critical:yes]
Disconnect / make safe electrical,08/13/2026,08/14/2026,PM / Super,Not Started,0.00,"",Production date window applied [critical:yes]
Structural demolition / openings - engineer review points,08/13/2026,08/19/2026,PM / Super,Not Started,0.00,"",Production date window applied [critical:yes]
PROCUREMENT - Release steel for fabrication,08/13/2026,08/13/2026,PM / Procurement,Not Started,0.00,"","Production date window applied [milestone:yes, critical:yes]"
Disconnect / make safe plumbing,08/14/2026,08/17/2026,PM / Super,Not Started,0.00,"",Production date window applied [critical:yes]
Debris sorting and haul-off cycle 1,08/14/2026,08/17/2026,PM / Super,Not Started,0.00,"",Production date window applied
Disconnect / make safe HVAC,08/17/2026,08/18/2026,PM / Super,Not Started,0.00,"",Production date window applied [critical:yes]
Confirm protection of occupied/adjacent areas,08/18/2026,08/18/2026,PM / Super,Not Started,0.00,"",Production date window applied
Debris sorting and haul-off cycle 2,08/18/2026,08/19/2026,PM / Super,Not Started,0.00,"",Production date window applied
Existing conditions RFI log review,08/19/2026,08/19/2026,PM / Super,Not Started,0.00,"",Production date window applied [critical:yes]
Field verify unforeseen conditions after demo,08/19/2026,08/20/2026,PM / Super,Not Started,0.00,"",Production date window applied [critical:yes]
PROCUREMENT - Steel fabrication,08/19/2026,09/29/2026,PM / Procurement,Not Started,0.00,"",Production date window applied [critical:yes]
Existing conditions release to demolition,08/20/2026,08/20/2026,PM / Super,Not Started,0.00,"","Production date window applied [milestone:yes, critical:yes]"
Mobilization / existing conditions complete milestone,08/21/2026,08/21/2026,PM / Super,Not Started,0.00,"","Production date window applied [milestone:yes, critical:yes]"
Issue demo condition RFI / sketch log as needed,08/21/2026,08/24/2026,PM / Super,Not Started,0.00,"",Production date window applied [critical:yes]
Demo area cleanup and safe-off,08/24/2026,08/25/2026,PM / Super,Not Started,0.00,"",Production date window applied
Mobilize excavation / shoring contractor,08/24/2026,08/25/2026,PM / Super,Not Started,0.00,"",Production date window applied [critical:yes]
PROCUREMENT - Steel delivery to site,08/24/2026,08/25/2026,PM / Procurement,Not Started,0.00,"",Production date window applied [critical:yes]
Structural engineer post-demo review,08/26/2026,08/26/2026,PM / Super,Not Started,0.00,"",Production date window applied [critical:yes]
Confirm excavation layout,08/26/2026,08/26/2026,PM / Super,Not Started,0.00,"",Production date window applied [critical:yes]
Revise sequence for discovered conditions if needed,08/27/2026,08/27/2026,PM / Super,Not Started,0.00,"",Production date window applied [critical:yes]
PROCUREMENT - Confirm window schedule / openings,08/27/2026,09/02/2026,PM / Procurement,Not Started,0.00,"",Production date window applied [critical:yes]
Install shoring / temporary support Area A,08/28/2026,09/03/2026,PM / Super,Not Started,0.00,"",Production date window applied [critical:yes]
Demo rough opening prep,08/31/2026,09/02/2026,PM / Super,Not Started,0.00,"",Production date window applied [critical:yes]
Demo complete - foundations areas released,09/01/2026,09/01/2026,PM / Super,Not Started,0.00,"","Production date window applied [milestone:yes, critical:yes]"
Underpinning Area A excavation,09/02/2026,09/07/2026,PM / Super,Not Started,0.00,"",Production date window applied [critical:yes]
PROCUREMENT - Window shop drawings,09/02/2026,09/15/2026,PM / Procurement,Not Started,0.00,"",Production date window applied [critical:yes]
Demo complete - framing areas released,09/03/2026,09/03/2026,PM / Super,Not Started,0.00,"","Production date window applied [milestone:yes, critical:yes]"
Demo complete - MEP investigation released,09/04/2026,09/04/2026,PM / Super,Not Started,0.00,"","Production date window applied [milestone:yes, critical:yes]"
Underpinning Area A form/rebar,09/04/2026,09/09/2026,PM / Super,Not Started,0.00,"",Production date window applied [critical:yes]
PROCUREMENT - Owner/architect approval - windows,09/07/2026,09/11/2026,PM / Procurement,Not Started,0.00,"",Production date window applied [critical:yes]
Demolition punch / cleanup,09/08/2026,09/09/2026,PM / Super,Not Started,0.00,"",Production date window applied
Underpinning Area A concrete placement,09/08/2026,09/08/2026,PM / Super,Not Started,0.00,"",Production date window applied [critical:yes]
Demolition waste final haul,09/09/2026,09/09/2026,PM / Super,Not Started,0.00,"",Production date window applied
Underpinning Area A cure/hold,09/10/2026,09/16/2026,PM / Super,Not Started,0.00,"",v04 update: structural underpinning plan states WAIT TWO WEEKS after phase 1 concrete cure before proceeding; duration corrected from 5 wd to 10 wd. [critical:yes]
PROCUREMENT - Release windows for production,09/10/2026,09/10/2026,PM / Procurement,Not Started,0.00,"","Production date window applied [milestone:yes, critical:yes]"
Demolition complete milestone,09/11/2026,09/11/2026,PM / Super,Not Started,0.00,"","Production date window applied [milestone:yes, critical:yes]"
Underpinning Area A engineer release,09/14/2026,09/14/2026,PM / Super,Not Started,0.00,"",Production date window applied [critical:yes]
Install shoring / temporary support Area B,09/16/2026,09/22/2026,PM / Super,Not Started,0.00,"",Production date window applied [critical:yes]
PROCUREMENT - Window manufacturing,09/16/2026,11/24/2026,PM / Procurement,Not Started,0.00,"",Production date window applied [critical:yes]
Underpinning Area B excavation,09/21/2026,09/24/2026,PM / Super,Not Started,0.00,"",Production date window applied [critical:yes]
PROCUREMENT - Window delivery to site,09/21/2026,09/22/2026,PM / Procurement,Not Started,0.00,"",Production date window applied [critical:yes]
Underpinning Area B form/rebar,09/23/2026,09/28/2026,PM / Super,Not Started,0.00,"",Production date window applied [critical:yes]
PROCUREMENT - Window delivery inspection,09/24/2026,09/24/2026,PM / Procurement,Not Started,0.00,"",Production date window applied [critical:yes]
Underpinning Area B concrete placement,09/25/2026,09/25/2026,PM / Super,Not Started,0.00,"",Production date window applied [critical:yes]
Underpinning Area B cure/hold,09/29/2026,10/05/2026,PM / Super,Not Started,0.00,"",v04 update: structural underpinning plan states WAIT TWO WEEKS after phase 2 concrete cure before removal/demo/new footing sequence; duration corrected from 5 wd to 10 wd. [critical:yes]
PROCUREMENT - Confirm exterior door schedule,09/30/2026,10/05/2026,PM / Procurement,Not Started,0.00,"",Production date window applied
Underpinning Area B engineer release,10/01/2026,10/01/2026,PM / Super,Not Started,0.00,"",Production date window applied [critical:yes]
PROCUREMENT - Exterior door submittals,10/05/2026,10/14/2026,PM / Procurement,Not Started,0.00,"",Production date window applied
Bulk excavation for new foundation areas,10/06/2026,10/15/2026,PM / Super,Not Started,0.00,"",Production date window applied [critical:yes]
Export excavated material,10/08/2026,10/15/2026,PM / Super,Not Started,0.00,"",Production date window applied [critical:yes]
PROCUREMENT - Owner/architect approval - exterior doors,10/08/2026,10/14/2026,PM / Procurement,Not Started,0.00,"",Production date window applied
Dewatering / moisture control as needed,10/12/2026,10/14/2026,PM / Super,Not Started,0.00,"",Production date window applied
Subgrade prep and cleanup,10/14/2026,10/15/2026,PM / Super,Not Started,0.00,"",Production date window applied [critical:yes]
PROCUREMENT - Release exterior doors,10/14/2026,10/14/2026,PM / Procurement,Not Started,0.00,"",Production date window applied [milestone:yes]
Proof roll / geotechnical observation,10/16/2026,10/16/2026,PM / Super,Not Started,0.00,"",Production date window applied [critical:yes]
Foundation formwork Area A,10/19/2026,10/22/2026,PM / Super,Not Started,0.00,"",Production date window applied [critical:yes]
PROCUREMENT - Exterior door fabrication,10/19/2026,12/04/2026,PM / Procurement,Not Started,0.00,"",Production date window applied
Overexcavation correction if required,10/21/2026,10/23/2026,PM / Super,Not Started,0.00,"",Production date window applied
Foundation reinforcing Area A,10/21/2026,10/26/2026,PM / Super,Not Started,0.00,"",Production date window applied [critical:yes]
PROCUREMENT - Exterior door delivery,10/22/2026,10/23/2026,PM / Procurement,Not Started,0.00,"",Production date window applied
Final footing excavation,10/23/2026,10/28/2026,PM / Super,Not Started,0.00,"",Production date window applied [critical:yes]
Foundation embed/sleeve coordination Area A,10/23/2026,10/26/2026,PM / Super,Not Started,0.00,"",Production date window applied [critical:yes]
Foundation inspection Area A,10/26/2026,10/26/2026,PM / Super,Not Started,0.00,"",Production date window applied [critical:yes]
Survey foundation layout confirmation,10/27/2026,10/27/2026,PM / Super,Not Started,0.00,"",Production date window applied [critical:yes]
Foundation concrete placement Area A,10/28/2026,10/28/2026,PM / Super,Not Started,0.00,"",Production date window applied [critical:yes]
PROCUREMENT - Confirm cabinet/millwork design basis,10/28/2026,11/06/2026,PM / Procurement,Not Started,0.00,"",Production date window applied
Excavation safety review,10/29/2026,10/29/2026,PM / Super,Not Started,0.00,"",Production date window applied [critical:yes]
Cure/strip Area A,10/30/2026,11/04/2026,PM / Super,Not Started,0.00,"",Production date window applied [critical:yes]
Foundation subgrade release,11/02/2026,11/02/2026,PM / Super,Not Started,0.00,"","Production date window applied [milestone:yes, critical:yes]"
PROCUREMENT - Cabinet shop drawings,11/02/2026,11/20/2026,PM / Procurement,Not Started,0.00,"",Production date window applied
Foundation formwork Area B,11/03/2026,11/06/2026,PM / Super,Not Started,0.00,"",Production date window applied [critical:yes]
Coordinate under-slab utility sleeves before concrete,11/04/2026,11/05/2026,PM / Super,Not Started,0.00,"",Production date window applied [critical:yes]
Foundation reinforcing Area B,11/04/2026,11/09/2026,PM / Super,Not Started,0.00,"",Production date window applied [critical:yes]
PROCUREMENT - Owner/architect approval - cabinets,11/05/2026,11/13/2026,PM / Procurement,Not Started,0.00,"",Production date window applied
Foundation embed/sleeve coordination Area B,11/06/2026,11/09/2026,PM / Super,Not Started,0.00,"",Production date window applied [critical:yes]
Earthwork / underpinning / shoring complete,11/09/2026,11/09/2026,PM / Super,Not Started,0.00,"","Production date window applied [milestone:yes, critical:yes]"
Foundation inspection Area B,11/10/2026,11/10/2026,PM / Super,Not Started,0.00,"",Production date window applied [critical:yes]
Release concrete foundations,11/11/2026,11/11/2026,PM / Super,Not Started,0.00,"","Production date window applied [milestone:yes, critical:yes]"
PROCUREMENT - Release cabinets for fabrication,11/11/2026,11/11/2026,PM / Procurement,Not Started,0.00,"",Production date window applied [milestone:yes]
Foundation concrete placement Area B,11/12/2026,11/12/2026,PM / Super,Not Started,0.00,"",Production date window applied [critical:yes]
Update schedule for actual excavation conditions,11/13/2026,11/13/2026,PM / Super,Not Started,0.00,"",Production date window applied
Cure/strip Area B,11/13/2026,11/18/2026,PM / Super,Not Started,0.00,"",Production date window applied [critical:yes]
PROCUREMENT - Cabinet fabrication,11/16/2026,02/05/2027,PM / Procurement,Not Started,0.00,"",Production date window applied
Foundation wall waterproofing,11/17/2026,11/23/2026,PM / Super,Not Started,0.00,"",Production date window applied [critical:yes]
Drain tile / foundation drainage,11/19/2026,11/24/2026,PM / Super,Not Started,0.00,"",Production date window applied [critical:yes]
PROCUREMENT - Cabinet delivery,11/19/2026,11/23/2026,PM / Procurement,Not Started,0.00,"",Production date window applied
Foundation insulation / protection board,11/23/2026,11/25/2026,PM / Super,Not Started,0.00,"",Production date window applied [critical:yes]
Under-slab plumbing rough coordination,11/24/2026,11/27/2026,PM / Super,Not Started,0.00,"",Production date window applied [critical:yes]
PROCUREMENT - Confirm stone selections and slabs,11/25/2026,12/08/2026,PM / Procurement,Not Started,0.00,"",Production date window applied
Under-slab electrical/data conduits,11/26/2026,11/30/2026,PM / Super,Not Started,0.00,"",Production date window applied [critical:yes]
Vapor barrier / under-slab prep,11/30/2026,12/01/2026,PM / Super,Not Started,0.00,"",Production date window applied [critical:yes]
PROCUREMENT - Stone shop/takeoff after field dimensions,11/30/2026,12/04/2026,PM / Procurement,Not Started,0.00,"",Production date window applied
Slab reinforcing / embeds,12/02/2026,12/04/2026,PM / Super,Not Started,0.00,"",Production date window applied [critical:yes]
Slab inspection,12/03/2026,12/03/2026,PM / Super,Not Started,0.00,"",Production date window applied [critical:yes]
PROCUREMENT - Stone fabrication,12/04/2026,01/07/2027,PM / Procurement,Not Started,0.00,"",Production date window applied
Slab concrete placement,12/07/2026,12/07/2026,PM / Super,Not Started,0.00,"",Production date window applied [critical:yes]
Slab cure / protection,12/09/2026,12/15/2026,PM / Super,Not Started,0.00,"",Production date window applied [critical:yes]
PROCUREMENT - Stone delivery,12/09/2026,12/10/2026,PM / Procurement,Not Started,0.00,"",Production date window applied
Backfill foundation areas,12/11/2026,12/16/2026,PM / Super,Not Started,0.00,"",Production date window applied [critical:yes]
Concrete patch / housekeeping,12/14/2026,12/15/2026,PM / Super,Not Started,0.00,"",Production date window applied
PROCUREMENT - Confirm tile selections,12/14/2026,12/22/2026,PM / Procurement,Not Started,0.00,"",Production date window applied
Structural steel pre-install coordination,12/14/2026,12/15/2026,PM / Super,Not Started,0.00,"",Production date window applied [critical:yes]
Foundation complete milestone,12/16/2026,12/16/2026,PM / Super,Not Started,0.00,"","Production date window applied [milestone:yes, critical:yes]"
Crane / equipment mobilization,12/17/2026,12/17/2026,PM / Super,Not Started,0.00,"",Production date window applied [critical:yes]
Release structural steel / framing,12/18/2026,12/18/2026,PM / Super,Not Started,0.00,"","Production date window applied [milestone:yes, critical:yes]"
PROCUREMENT - Tile submittals/mockups,12/18/2026,12/28/2026,PM / Procurement,Not Started,0.00,"",Production date window applied
Install primary structural steel,12/21/2026,12/28/2026,PM / Super,Not Started,0.00,"",Production date window applied [critical:yes]
PROCUREMENT - Release tile material,12/23/2026,12/23/2026,PM / Procurement,Not Started,0.00,"",Production date window applied [milestone:yes]
Install secondary steel / lintels / misc supports,12/24/2026,12/30/2026,PM / Super,Not Started,0.00,"",Production date window applied [critical:yes]
PROCUREMENT - Tile procurement/delivery,12/28/2026,02/12/2027,PM / Procurement,Not Started,0.00,"",Production date window applied
Welding / bolting completion,12/29/2026,12/31/2026,PM / Super,Not Started,0.00,"",Production date window applied [critical:yes]
Structural steel inspection,12/31/2026,12/31/2026,PM / Super,Not Started,0.00,"",Production date window applied [critical:yes]
PROCUREMENT - Confirm appliance package,01/01/2027,01/11/2027,PM / Procurement,Not Started,0.00,"",Production date window applied
Steel corrections / punch,01/05/2027,01/07/2027,PM / Super,Not Started,0.00,"",Production date window applied [critical:yes]
PROCUREMENT - Release appliance order,01/06/2027,01/06/2027,PM / Procurement,Not Started,0.00,"",Production date window applied [milestone:yes]
Engineer release structural steel,01/07/2027,01/07/2027,PM / Super,Not Started,0.00,"",Production date window applied [critical:yes]
PROCUREMENT - Appliance procurement lead time,01/11/2027,04/02/2027,PM / Procurement,Not Started,0.00,"",Production date window applied
Framing mobilization,01/11/2027,01/12/2027,PM / Super,Not Started,0.00,"",Production date window applied [critical:yes]
Structural steel complete milestone,01/12/2027,01/12/2027,PM / Super,Not Started,0.00,"","Production date window applied [milestone:yes, critical:yes]"
Layout walls/openings,01/13/2027,01/14/2027,PM / Super,Not Started,0.00,"",Production date window applied [critical:yes]
PROCUREMENT - Appliance delivery,01/15/2027,01/18/2027,PM / Procurement,Not Started,0.00,"",Production date window applied
Release framing structural work,01/15/2027,01/15/2027,PM / Super,Not Started,0.00,"","Production date window applied [milestone:yes, critical:yes]"
Floor framing / structural modifications,01/15/2027,01/26/2027,PM / Super,Not Started,0.00,"",Production date window applied [critical:yes]
Update as-built dimensions for openings,01/19/2027,01/20/2027,PM / Super,Not Started,0.00,"",Production date window applied [critical:yes]
Wall framing Area A,01/19/2027,01/28/2027,PM / Super,Not Started,0.00,"",Production date window applied [critical:yes]
PROCUREMENT - Confirm decorative lighting schedule,01/20/2027,02/02/2027,PM / Procurement,Not Started,0.00,"",Production date window applied
Wall framing Area B,01/21/2027,02/01/2027,PM / Super,Not Started,0.00,"",Production date window applied [critical:yes]
Steel procurement/installation closeout,01/22/2027,01/22/2027,PM / Super,Not Started,0.00,"",Production date window applied
PROCUREMENT - Lighting submittals,01/25/2027,02/02/2027,PM / Procurement,Not Started,0.00,"",Production date window applied
Roof framing modifications,01/25/2027,02/03/2027,PM / Super,Not Started,0.00,"",Production date window applied [critical:yes]
Shear / holdown / hardware install,01/27/2027,02/02/2027,PM / Super,Not Started,0.00,"",Production date window applied [critical:yes]
PROCUREMENT - Release decorative lighting,01/29/2027,01/29/2027,PM / Procurement,Not Started,0.00,"",Production date window applied [milestone:yes]
Stair / structural backing coordination,01/29/2027,02/03/2027,PM / Super,Not Started,0.00,"",Production date window applied [critical:yes]
Window/door rough opening framing,02/02/2027,02/08/2027,PM / Super,Not Started,0.00,"",Production date window applied [critical:yes]
PROCUREMENT - Decorative lighting procurement,02/03/2027,04/13/2027,PM / Procurement,Not Started,0.00,"",Production date window applied
MEP backing/blocking phase 1,02/04/2027,02/09/2027,PM / Super,Not Started,0.00,"",Production date window applied
PROCUREMENT - Decorative lighting delivery,02/08/2027,02/09/2027,PM / Procurement,Not Started,0.00,"",Production date window applied
MEP backing/blocking phase 2,02/08/2027,02/11/2027,PM / Super,Not Started,0.00,"",Production date window applied
Fire blocking / draftstopping,02/10/2027,02/12/2027,PM / Super,Not Started,0.00,"",Production date window applied [critical:yes]
PROCUREMENT - Confirm plumbing fixture schedule,02/12/2027,02/25/2027,PM / Procurement,Not Started,0.00,"",Production date window applied
Exterior sheathing,02/15/2027,02/22/2027,PM / Super,Not Started,0.00,"",Production date window applied [critical:yes]
Roofing/weatherproofing precon,02/15/2027,02/15/2027,PM / Super,Not Started,0.00,"",Production date window applied [critical:yes]
PROCUREMENT - Fixture submittals,02/17/2027,02/25/2027,PM / Procurement,Not Started,0.00,"",Production date window applied
Interior framing corrections,02/17/2027,02/22/2027,PM / Super,Not Started,0.00,"",Production date window applied [critical:yes]
Install roof underlayment/dry-in phase 1,02/18/2027,02/24/2027,PM / Super,Not Started,0.00,"",Production date window applied [critical:yes]
Structural framing inspection prep,02/19/2027,02/22/2027,PM / Super,Not Started,0.00,"",Production date window applied [critical:yes]
PROCUREMENT - Release plumbing fixtures,02/22/2027,02/22/2027,PM / Procurement,Not Started,0.00,"",Production date window applied [milestone:yes]
MEP coordination meeting / clash review,02/22/2027,02/23/2027,PM / Super,Not Started,0.00,"",Production date window applied [critical:yes]
Structural framing inspection,02/23/2027,02/23/2027,PM / Super,Not Started,0.00,"",Production date window applied [critical:yes]
Install roof flashings phase 1,02/23/2027,02/26/2027,PM / Super,Not Started,0.00,"",Production date window applied [critical:yes]
Plumbing rough-in underground/remaining,02/24/2027,03/02/2027,PM / Super,Not Started,0.00,"",Production date window applied [critical:yes]
Framing corrections / punch,02/25/2027,03/02/2027,PM / Super,Not Started,0.00,"",Production date window applied [critical:yes]
PROCUREMENT - Plumbing fixture procurement,02/26/2027,04/29/2027,PM / Procurement,Not Started,0.00,"",Production date window applied
Install roofing phase 1,02/26/2027,03/08/2027,PM / Super,Not Started,0.00,"",Production date window applied [critical:yes]
Plumbing rough-in walls/ceilings Area A,02/26/2027,03/09/2027,PM / Super,Not Started,0.00,"",Production date window applied [critical:yes]
Engineer framing release,03/01/2027,03/01/2027,PM / Super,Not Started,0.00,"",Production date window applied [critical:yes]
Plumbing rough-in walls/ceilings Area B,03/02/2027,03/11/2027,PM / Super,Not Started,0.00,"",Production date window applied [critical:yes]
PROCUREMENT - Plumbing fixtures delivery,03/03/2027,03/04/2027,PM / Procurement,Not Started,0.00,"",Production date window applied
Framing complete milestone,03/03/2027,03/03/2027,PM / Super,Not Started,0.00,"","Production date window applied [milestone:yes, critical:yes]"
Install WRB / exterior waterproofing,03/03/2027,03/11/2027,PM / Super,Not Started,0.00,"",Production date window applied [critical:yes]
HVAC layout and equipment coordination,03/04/2027,03/09/2027,PM / Super,Not Started,0.00,"",Production date window applied [critical:yes]
Release rough MEP,03/05/2027,03/05/2027,PM / Super,Not Started,0.00,"","Production date window applied [milestone:yes, critical:yes]"
Window field verification complete,03/05/2027,03/08/2027,PM / Super,Not Started,0.00,"",Production date window applied [critical:yes]
PROCUREMENT - Confirm AV/controls scope,03/08/2027,03/16/2027,PM / Procurement,Not Started,0.00,"",Production date window applied
HVAC rough duct / hydronic Area A,03/08/2027,03/17/2027,PM / Super,Not Started,0.00,"",Production date window applied [critical:yes]
Release roofing rough-in,03/09/2027,03/09/2027,PM / Super,Not Started,0.00,"","Production date window applied [milestone:yes, critical:yes]"
Window delivery confirmed,03/10/2027,03/10/2027,PM / Super,Not Started,0.00,"","Production date window applied [milestone:yes, critical:yes]"
HVAC rough duct / hydronic Area B,03/10/2027,03/19/2027,PM / Super,Not Started,0.00,"",Production date window applied [critical:yes]
Release window field verification,03/11/2027,03/11/2027,PM / Super,Not Started,0.00,"","Production date window applied [milestone:yes, critical:yes]"
PROCUREMENT - AV/controls shop drawings,03/12/2027,03/31/2027,PM / Procurement,Not Started,0.00,"",Production date window applied
Electrical rough-in layout,03/12/2027,03/17/2027,PM / Super,Not Started,0.00,"",Production date window applied [critical:yes]
Framing waste cleanup,03/15/2027,03/16/2027,PM / Super,Not Started,0.00,"",Production date window applied
Install windows Area A,03/15/2027,03/19/2027,PM / Super,Not Started,0.00,"",Production date window applied [critical:yes]
Electrical rough-in Area A,03/16/2027,03/25/2027,PM / Super,Not Started,0.00,"",Production date window applied [critical:yes]
PROCUREMENT - Owner approval - AV/controls,03/17/2027,03/23/2027,PM / Procurement,Not Started,0.00,"",Production date window applied
Framing closeout coordination,03/17/2027,03/17/2027,PM / Super,Not Started,0.00,"",Production date window applied
Install windows Area B,03/18/2027,03/24/2027,PM / Super,Not Started,0.00,"",Production date window applied [critical:yes]
Electrical rough-in Area B,03/18/2027,03/29/2027,PM / Super,Not Started,0.00,"",Production date window applied [critical:yes]
PROCUREMENT - Release AV/controls equipment,03/22/2027,03/22/2027,PM / Procurement,Not Started,0.00,"",Production date window applied [milestone:yes]
Lighting control rough-in,03/22/2027,03/26/2027,PM / Super,Not Started,0.00,"",Production date window applied [critical:yes]
Install exterior doors,03/23/2027,03/26/2027,PM / Super,Not Started,0.00,"",Production date window applied [critical:yes]
Low voltage / AV rough-in Area A,03/24/2027,03/31/2027,PM / Super,Not Started,0.00,"",Production date window applied
PROCUREMENT - AV equipment procurement,03/26/2027,05/27/2027,PM / Procurement,Not Started,0.00,"",Production date window applied
Air/water barrier tie-ins,03/26/2027,03/31/2027,PM / Super,Not Started,0.00,"",Production date window applied [critical:yes]
Low voltage / AV rough-in Area B,03/26/2027,04/02/2027,PM / Super,Not Started,0.00,"",Production date window applied
Fire protection rough-in if required,03/30/2027,04/05/2027,PM / Super,Not Started,0.00,"",Production date window applied
PROCUREMENT - AV equipment delivery,03/31/2027,04/01/2027,PM / Procurement,Not Started,0.00,"",Production date window applied
Exterior cladding subframing,03/31/2027,04/06/2027,PM / Super,Not Started,0.00,"",Production date window applied [critical:yes]
Mechanical equipment set rough phase,04/01/2027,04/06/2027,PM / Super,Not Started,0.00,"",Production date window applied [critical:yes]
Exterior cladding install Area A,04/05/2027,04/14/2027,PM / Super,Not Started,0.00,"",Production date window applied [critical:yes]
Bath fan / venting rough-in,04/05/2027,04/07/2027,PM / Super,Not Started,0.00,"",Production date window applied
Exterior grading coordination,04/05/2027,04/07/2027,PM / Super,Not Started,0.00,"",Production date window applied
Exterior cladding install Area B,04/07/2027,04/16/2027,PM / Super,Not Started,0.00,"",Production date window applied [critical:yes]
Gas piping rough-in if required,04/07/2027,04/12/2027,PM / Super,Not Started,0.00,"",Production date window applied
Exterior trim/flashing details,04/12/2027,04/16/2027,PM / Super,Not Started,0.00,"",Production date window applied [critical:yes]
MEP pressure tests / rough QA,04/12/2027,04/14/2027,PM / Super,Not Started,0.00,"",Production date window applied [critical:yes]
Plumbing rough inspection,04/14/2027,04/14/2027,PM / Super,Not Started,0.00,"",Production date window applied [critical:yes]
Roofing phase 2 / final tie-ins,04/15/2027,04/21/2027,PM / Super,Not Started,0.00,"",Production date window applied [critical:yes]
HVAC rough inspection,04/16/2027,04/16/2027,PM / Super,Not Started,0.00,"",Production date window applied [critical:yes]
Utility tie-in coordination,04/16/2027,04/20/2027,PM / Super,Not Started,0.00,"",Production date window applied
Gutters/downspouts/drainage tie-ins,04/20/2027,04/23/2027,PM / Super,Not Started,0.00,"",Production date window applied [critical:yes]
Electrical rough inspection,04/20/2027,04/20/2027,PM / Super,Not Started,0.00,"",Production date window applied [critical:yes]
Low voltage rough review,04/22/2027,04/22/2027,PM / Super,Not Started,0.00,"",Production date window applied
Envelope inspection / water test as required,04/23/2027,04/26/2027,PM / Super,Not Started,0.00,"",Production date window applied [critical:yes]
MEP corrections Area A,04/26/2027,04/29/2027,PM / Super,Not Started,0.00,"",Production date window applied [critical:yes]
Envelope corrections / punch,04/28/2027,05/03/2027,PM / Super,Not Started,0.00,"",Production date window applied [critical:yes]
MEP corrections Area B,04/28/2027,05/03/2027,PM / Super,Not Started,0.00,"",Production date window applied [critical:yes]
Hardscape layout,04/28/2027,04/29/2027,PM / Super,Not Started,0.00,"",Production date window applied
MEP rough-in complete milestone,04/30/2027,04/30/2027,PM / Super,Not Started,0.00,"","Production date window applied [milestone:yes, critical:yes]"
Building dry-in milestone,05/03/2027,05/03/2027,PM / Super,Not Started,0.00,"","Production date window applied [milestone:yes, critical:yes]"
Release insulation,05/04/2027,05/04/2027,PM / Super,Not Started,0.00,"","Production date window applied [milestone:yes, critical:yes]"
Release insulation / drywall path,05/06/2027,05/06/2027,PM / Super,Not Started,0.00,"","Production date window applied [milestone:yes, critical:yes]"
MEP rough-in documentation update,05/06/2027,05/07/2027,PM / Super,Not Started,0.00,"",Production date window applied
Exterior paint/stain prep,05/10/2027,05/13/2027,PM / Super,Not Started,0.00,"",Production date window applied
Confirm fixture procurement status,05/10/2027,05/10/2027,PM / Super,Not Started,0.00,"",Production date window applied [critical:yes]
Hardscape base prep,05/11/2027,05/17/2027,PM / Super,Not Started,0.00,"",Production date window applied
Confirm lighting procurement status,05/12/2027,05/12/2027,PM / Super,Not Started,0.00,"",Production date window applied [critical:yes]
Exterior paint/stain,05/13/2027,05/24/2027,PM / Super,Not Started,0.00,"",Production date window applied
Confirm AV procurement status,05/14/2027,05/14/2027,PM / Super,Not Started,0.00,"",Production date window applied
Insulation pre-inspection prep,05/17/2027,05/18/2027,PM / Super,Not Started,0.00,"",Production date window applied [critical:yes]
Exterior final punch,05/18/2027,05/20/2027,PM / Super,Not Started,0.00,"",Production date window applied
MEP coordination with millwork,05/18/2027,05/19/2027,PM / Super,Not Started,0.00,"",Production date window applied [critical:yes]
Insulation install exterior walls/roof,05/19/2027,05/26/2027,PM / Super,Not Started,0.00,"",Production date window applied [critical:yes]
MEP coordination with tile/stone,05/20/2027,05/21/2027,PM / Super,Not Started,0.00,"",Production date window applied [critical:yes]
Exterior envelope substantial complete,05/21/2027,05/21/2027,PM / Super,Not Started,0.00,"",Production date window applied [milestone:yes]
Air seal / thermal envelope QA,05/21/2027,05/24/2027,PM / Super,Not Started,0.00,"",Production date window applied [critical:yes]
Rough-in photo documentation,05/24/2027,05/25/2027,PM / Super,Not Started,0.00,"",Production date window applied
Hardscape install,05/24/2027,06/02/2027,PM / Super,Not Started,0.00,"",Production date window applied
Weather contingency allowance / reserve activity,05/26/2027,06/01/2027,PM / Super,Not Started,0.00,"",Production date window applied
MEP rough closeout meeting,05/26/2027,05/26/2027,PM / Super,Not Started,0.00,"",Production date window applied
Insulation inspection,05/26/2027,05/26/2027,PM / Super,Not Started,0.00,"",Production date window applied [critical:yes]
Insulation corrections,05/28/2027,05/31/2027,PM / Super,Not Started,0.00,"",Production date window applied [critical:yes]
Drywall stocking,06/01/2027,06/02/2027,PM / Super,Not Started,0.00,"",Production date window applied [critical:yes]
Drywall hang Area A,06/03/2027,06/10/2027,PM / Super,Not Started,0.00,"",Production date window applied [critical:yes]
Irrigation rough-in,06/03/2027,06/09/2027,PM / Super,Not Started,0.00,"",Production date window applied
Drywall hang Area B,06/08/2027,06/15/2027,PM / Super,Not Started,0.00,"",Production date window applied [critical:yes]
Drywall finish/tape Area A,06/10/2027,06/21/2027,PM / Super,Not Started,0.00,"",Production date window applied [critical:yes]
Drywall finish/tape Area B,06/14/2027,06/23/2027,PM / Super,Not Started,0.00,"",Production date window applied [critical:yes]
Drywall sand / level check,06/16/2027,06/18/2027,PM / Super,Not Started,0.00,"",Production date window applied [critical:yes]
Irrigation test,06/16/2027,06/16/2027,PM / Super,Not Started,0.00,"",Production date window applied
Prime drywall,06/21/2027,06/24/2027,PM / Super,Not Started,0.00,"",Production date window applied [critical:yes]
Drywall/prime punch,06/23/2027,06/25/2027,PM / Super,Not Started,0.00,"",Production date window applied [critical:yes]
Drywall complete milestone,06/25/2027,06/25/2027,PM / Super,Not Started,0.00,"","Production date window applied [milestone:yes, critical:yes]"
Release interior finishes,06/29/2027,06/29/2027,PM / Super,Not Started,0.00,"","Production date window applied [milestone:yes, critical:yes]"
Landscape soil prep,06/29/2027,07/02/2027,PM / Super,Not Started,0.00,"",Production date window applied
Wet area waterproofing prep,07/02/2027,07/06/2027,PM / Super,Not Started,0.00,"",Production date window applied [critical:yes]
Interior doors/frames field verify,07/05/2027,07/06/2027,PM / Super,Not Started,0.00,"",Production date window applied [critical:yes]
Wet area waterproofing install,07/06/2027,07/09/2027,PM / Super,Not Started,0.00,"",Production date window applied [critical:yes]
Wet area flood test/inspection,07/08/2027,07/09/2027,PM / Super,Not Started,0.00,"",Production date window applied [critical:yes]
Interior door procurement status confirm,07/08/2027,07/08/2027,PM / Super,Not Started,0.00,"",Production date window applied [critical:yes]
Planting / restoration,07/09/2027,07/19/2027,PM / Super,Not Started,0.00,"",Production date window applied
Tile backer / substrate complete,07/12/2027,07/15/2027,PM / Super,Not Started,0.00,"",Production date window applied [critical:yes]
Interior trim material confirm,07/12/2027,07/12/2027,PM / Super,Not Started,0.00,"",Production date window applied
Interior finish layout meeting,07/15/2027,07/15/2027,PM / Super,Not Started,0.00,"",Production date window applied [critical:yes]
Cabinet delivery confirmed,07/15/2027,07/15/2027,PM / Super,Not Started,0.00,"","Production date window applied [milestone:yes, critical:yes]"
Finish protection plan install,07/19/2027,07/20/2027,PM / Super,Not Started,0.00,"",Production date window applied
Cabinet install Area A,07/19/2027,07/28/2027,PM / Super,Not Started,0.00,"",Production date window applied [critical:yes]
Release tile and flooring,07/21/2027,07/21/2027,PM / Super,Not Started,0.00,"","Production date window applied [milestone:yes, critical:yes]"
Cabinet install Area B,07/22/2027,08/02/2027,PM / Super,Not Started,0.00,"",Production date window applied [critical:yes]
Mulch / final landscape cleanup,07/22/2027,07/23/2027,PM / Super,Not Started,0.00,"",Production date window applied
Millwork / trim install Area A,07/26/2027,08/04/2027,PM / Super,Not Started,0.00,"",Production date window applied [critical:yes]
Millwork / trim install Area B,07/29/2027,08/09/2027,PM / Super,Not Started,0.00,"",Production date window applied [critical:yes]
Tile material delivery confirmed,08/02/2027,08/02/2027,PM / Super,Not Started,0.00,"","Production date window applied [milestone:yes, critical:yes]"
Exterior drainage review,08/03/2027,08/03/2027,PM / Super,Not Started,0.00,"",Production date window applied
Tile install wet areas Area A,08/05/2027,08/18/2027,PM / Super,Not Started,0.00,"",Production date window applied [critical:yes]
Tile install wet areas Area B,08/09/2027,08/20/2027,PM / Super,Not Started,0.00,"",Production date window applied [critical:yes]
Tile grout/seal,08/12/2027,08/17/2027,PM / Super,Not Started,0.00,"",Production date window applied [critical:yes]
Drive/walk repair if required,08/16/2027,08/19/2027,PM / Super,Not Started,0.00,"",Production date window applied
Stone slab field dimensions,08/17/2027,08/18/2027,PM / Super,Not Started,0.00,"",Production date window applied [critical:yes]
Stone fabrication release after field dimensions,08/19/2027,08/19/2027,PM / Super,Not Started,0.00,"","Production date window applied [milestone:yes, critical:yes]"
Stone delivery confirmed,08/24/2027,08/24/2027,PM / Super,Not Started,0.00,"","Production date window applied [milestone:yes, critical:yes]"
Countertop / stone install,08/26/2027,09/02/2027,PM / Super,Not Started,0.00,"",Production date window applied [critical:yes]
Exterior railings/misc site metals,08/27/2027,09/01/2027,PM / Super,Not Started,0.00,"",Production date window applied
Flooring substrate prep,08/31/2027,09/06/2027,PM / Super,Not Started,0.00,"",Production date window applied [critical:yes]
Flooring install Area A,09/02/2027,09/13/2027,PM / Super,Not Started,0.00,"",Production date window applied [critical:yes]
Flooring install Area B,09/07/2027,09/16/2027,PM / Super,Not Started,0.00,"",Production date window applied [critical:yes]
Exterior lighting final,09/08/2027,09/10/2027,PM / Super,Not Started,0.00,"",Production date window applied
Flooring finish/protection,09/09/2027,09/14/2027,PM / Super,Not Started,0.00,"",Production date window applied [critical:yes]
Paint prep / masking,09/14/2027,09/17/2027,PM / Super,Not Started,0.00,"",Production date window applied
Paint finish coats Area A,09/16/2027,09/23/2027,PM / Super,Not Started,0.00,"",Production date window applied [critical:yes]
Paint finish coats Area B,09/21/2027,09/28/2027,PM / Super,Not Started,0.00,"",Production date window applied [critical:yes]
Site punch walk,09/21/2027,09/21/2027,PM / Super,Not Started,0.00,"",Production date window applied
Finish hardware delivery confirmed,09/24/2027,09/24/2027,PM / Super,Not Started,0.00,"",Production date window applied
Interior door install,09/28/2027,10/04/2027,PM / Super,Not Started,0.00,"",Production date window applied [critical:yes]
Finish carpentry punch,10/01/2027,10/06/2027,PM / Super,Not Started,0.00,"",Production date window applied [critical:yes]
Site punch corrections,10/04/2027,10/08/2027,PM / Super,Not Started,0.00,"",Production date window applied
Cabinet / millwork punch,10/05/2027,10/08/2027,PM / Super,Not Started,0.00,"",Production date window applied [critical:yes]
Tile / stone punch,10/08/2027,10/12/2027,PM / Super,Not Started,0.00,"",Production date window applied
Flooring punch,10/12/2027,10/14/2027,PM / Super,Not Started,0.00,"",Production date window applied
Exterior site complete milestone,10/14/2027,10/14/2027,PM / Super,Not Started,0.00,"",Production date window applied [milestone:yes]
Paint touch-up phase 1,10/15/2027,10/19/2027,PM / Super,Not Started,0.00,"",Production date window applied
Specialty bath accessories/blocking complete,10/19/2027,10/21/2027,PM / Super,Not Started,0.00,"",Production date window applied
Glass/shower door field measure,10/22/2027,10/25/2027,PM / Super,Not Started,0.00,"",Production date window applied [critical:yes]
Glass/shower door fabrication,10/26/2027,11/22/2027,PM / Super,Not Started,0.00,"",Production date window applied [critical:yes]
Seasonal planting/weather allowance,10/27/2027,11/02/2027,PM / Super,Not Started,0.00,"",Production date window applied
Glass/shower door install,10/29/2027,11/02/2027,PM / Super,Not Started,0.00,"",Production date window applied [critical:yes]
Appliance delivery confirmed,11/03/2027,11/03/2027,PM / Super,Not Started,0.00,"","Production date window applied [milestone:yes, critical:yes]"
Appliance install,11/05/2027,11/09/2027,PM / Super,Not Started,0.00,"",Production date window applied [critical:yes]
Finish plumbing trim,11/08/2027,11/12/2027,PM / Super,Not Started,0.00,"",Production date window applied [critical:yes]
Finish plumbing fixtures delivery confirmed,11/10/2027,11/10/2027,PM / Super,Not Started,0.00,"","Production date window applied [milestone:yes, critical:yes]"
Finish electrical devices,11/10/2027,11/16/2027,PM / Super,Not Started,0.00,"",Production date window applied [critical:yes]
Finish electrical/decorative lighting delivery confirmed,11/12/2027,11/12/2027,PM / Super,Not Started,0.00,"","Production date window applied [milestone:yes, critical:yes]"
Decorative lighting install,11/12/2027,11/18/2027,PM / Super,Not Started,0.00,"",Production date window applied [critical:yes]
HVAC grilles/trim/final equipment,11/16/2027,11/22/2027,PM / Super,Not Started,0.00,"",Production date window applied [critical:yes]
AV equipment delivery confirmed,11/17/2027,11/17/2027,PM / Super,Not Started,0.00,"",Production date window applied [milestone:yes]
Low voltage / AV device install,11/18/2027,11/24/2027,PM / Super,Not Started,0.00,"",Production date window applied
Interior finishes substantial complete,11/19/2027,11/19/2027,PM / Super,Not Started,0.00,"","Production date window applied [milestone:yes, critical:yes]"
Lighting controls programming,11/22/2027,11/26/2027,PM / Super,Not Started,0.00,"",Production date window applied [critical:yes]
Interior finish punch list create,11/24/2027,11/25/2027,PM / Super,Not Started,0.00,"",Production date window applied [critical:yes]
HVAC startup and balancing,11/24/2027,11/30/2027,PM / Super,Not Started,0.00,"",Production date window applied [critical:yes]
Plumbing fixture test,11/25/2027,11/26/2027,PM / Super,Not Started,0.00,"",Production date window applied [critical:yes]
Interior finish punch corrections,11/26/2027,12/07/2027,PM / Super,Not Started,0.00,"",Production date window applied [critical:yes]
Electrical panel labeling / testing,11/29/2027,11/30/2027,PM / Super,Not Started,0.00,"",Production date window applied [critical:yes]
Owner pre-punch walk,12/01/2027,12/01/2027,PM / Super,Not Started,0.00,"",Production date window applied [critical:yes]
AV/controls programming,12/01/2027,12/07/2027,PM / Super,Not Started,0.00,"",Production date window applied
Architect punch walk,12/03/2027,12/03/2027,PM / Super,Not Started,0.00,"",Production date window applied [critical:yes]
Fire/smoke/CO devices final,12/03/2027,12/06/2027,PM / Super,Not Started,0.00,"",Production date window applied [critical:yes]
MEP final punch,12/07/2027,12/10/2027,PM / Super,Not Started,0.00,"",Production date window applied [critical:yes]
Interior finishes complete milestone,12/08/2027,12/08/2027,PM / Super,Not Started,0.00,"","Production date window applied [milestone:yes, critical:yes]"
Mechanical final inspection,12/09/2027,12/09/2027,PM / Super,Not Started,0.00,"",Production date window applied [critical:yes]
Plumbing final inspection,12/13/2027,12/13/2027,PM / Super,Not Started,0.00,"",Production date window applied [critical:yes]
Electrical final inspection,12/15/2027,12/15/2027,PM / Super,Not Started,0.00,"",Production date window applied [critical:yes]
Low voltage / security final review,12/17/2027,12/17/2027,PM / Super,Not Started,0.00,"",Production date window applied
Commission HVAC systems,12/21/2027,12/23/2027,PM / Super,Not Started,0.00,"",Production date window applied [critical:yes]
Commission lighting controls,12/23/2027,12/27/2027,PM / Super,Not Started,0.00,"",Production date window applied [critical:yes]
Commission AV / controls,12/27/2027,12/29/2027,PM / Super,Not Started,0.00,"",Production date window applied
Owner systems training - MEP/controls,12/29/2027,12/30/2027,PM / Super,Not Started,0.00,"",Production date window applied [critical:yes]
MEP O&M manuals collect,12/31/2027,01/04/2028,PM / Super,Not Started,0.00,"",Production date window applied
Commissioning corrections,01/03/2028,01/07/2028,PM / Super,Not Started,0.00,"",Production date window applied [critical:yes]
Commissioning complete milestone,01/05/2028,01/05/2028,PM / Super,Not Started,0.00,"","Production date window applied [milestone:yes, critical:yes]"
Final clean phase 1,01/07/2028,01/11/2028,PM / Super,Not Started,0.00,"",Production date window applied [critical:yes]
Owner punch list consolidation,01/10/2028,01/11/2028,PM / Super,Not Started,0.00,"",Production date window applied [critical:yes]
Final clean phase 2,01/11/2028,01/13/2028,PM / Super,Not Started,0.00,"",Production date window applied [critical:yes]
Punch list corrections cycle 1,01/11/2028,01/20/2028,PM / Super,Not Started,0.00,"",Production date window applied [critical:yes]
Final inspection prep,01/13/2028,01/14/2028,PM / Super,Not Started,0.00,"",Production date window applied [critical:yes]
Punch list owner review,01/13/2028,01/13/2028,PM / Super,Not Started,0.00,"",Production date window applied [critical:yes]
Punch list corrections cycle 2,01/14/2028,01/20/2028,PM / Super,Not Started,0.00,"",Production date window applied
Final building inspection,01/17/2028,01/17/2028,PM / Super,Not Started,0.00,"",Production date window applied [critical:yes]
Final paint touch-up,01/18/2028,01/20/2028,PM / Super,Not Started,0.00,"",Production date window applied
Certificate of Occupancy / final approval milestone,01/19/2028,01/19/2028,PM / Super,Not Started,0.00,"","Production date window applied [milestone:yes, critical:yes]"
Final cleaning / detail clean,01/19/2028,01/21/2028,PM / Super,Not Started,0.00,"",Production date window applied [critical:yes]
O&M manuals complete,01/20/2028,01/24/2028,PM / Super,Not Started,0.00,"",Production date window applied
Warranty information complete,01/24/2028,01/25/2028,PM / Super,Not Started,0.00,"",Production date window applied
As-built / record document collection,01/25/2028,01/31/2028,PM / Super,Not Started,0.00,"",Production date window applied
Subcontractor closeout docs request,01/26/2028,01/27/2028,PM / Super,Not Started,0.00,"",Production date window applied
Lien releases / final billing package,01/28/2028,02/03/2028,PM / Super,Not Started,0.00,"",Production date window applied [critical:yes]
Owner training complete,01/31/2028,02/01/2028,PM / Super,Not Started,0.00,"",Production date window applied [critical:yes]
Final owner walk,02/01/2028,02/01/2028,PM / Super,Not Started,0.00,"",Production date window applied [critical:yes]
Architect closeout confirmation,02/03/2028,02/03/2028,PM / Super,Not Started,0.00,"",Production date window applied [critical:yes]
Final punch complete milestone,02/04/2028,02/04/2028,PM / Super,Not Started,0.00,"","Production date window applied [milestone:yes, critical:yes]"
Substantial completion milestone,02/08/2028,02/08/2028,PM / Super,Not Started,0.00,"","Production date window applied [milestone:yes, critical:yes]"
Final completion / turnover milestone,02/09/2028,02/09/2028,PM / Super,Not Started,0.00,"","Production date window applied [milestone:yes, critical:yes]"
